# Fluber

Schedule from MS Project, 2018-09-17 to 2018-12-31, costs in ₽.

## Calendars

- Стандартный: Mon-Fri 09:00-13:00, 14:00-18:00; Sat-Sun off.

## Resources

| Resource | Rate |
| --- | --- |
| Project curator | 400 |
| Manager | 350 |
| Analyst | 330 |
| Designer | 280 |
| System Architect | 270 |
| Technical writer | 250 |
| Financier | 240 |
| Tester | 220 |
| Programmer | 150 |
| CEO |  |
| Coolers with water | 1500 |
| Paper | 300 |
| Electricity |  |
| Manager `s assistant | 100 |

## Schedule

| ID | WBS | Task | Type | Duration | Start | Finish | Predecessors | Total slack | Free slack | Constraint | Resources | Work | Cost |
| --- | --- | --- | --- | --- | --- | --- | --- | --- | --- | --- | --- | --- | --- |
| 1 | 1 | **Initiation** |  | 17d | 2018-09-17 | 2018-10-09 |  | 16d |  |  |  | 56.5h | 18,220 |
| 2 | 1.1 | **Issue of the order to launch the project** |  | 1d | 2018-09-17 | 2018-09-17 |  | 29d |  |  |  | 9h | 4,600 |
| 3 | 1.1.1 | Development of the order to launch the project |  | 4h | 2018-09-17 | 2018-09-17 |  | 29d | 0d | start no earlier than 2018-09-17 | Manager; Paper; Coolers with water | 4h | 3,200 |
| 4 | 1.1.2 | Approval of the order to launch the project |  | 4h | 2018-09-17 | 2018-09-17 | 3 | 29d | 0d |  | CEO [25%]; Manager; Project curator | 5h | 1,400 |
| 5 | 1.1.3 | Milestone: The order to launch the project | milestone | 0d | 2018-09-17 | 2018-09-17 | 4 | 74.75d |  |  |  |  |  |
| 6 | 1.2 | **Collection of requirements** |  | 2.25d | 2018-09-17 | 2018-09-20 |  | 28.5d |  |  |  | 30.5h | 8,440 |
| 7 | 1.2.1 | Stakeholder analysis |  | 8h | 2018-09-19 | 2018-09-19 | 4 | 28.75d | 0.25d |  | Analyst; Paper | 8h | 2,940 |
| 8 | 1.2.2 | Definition of project goals and outcomes |  | 2h | 2018-09-20 | 2018-09-20 | 4 | 28.5d | 0d |  | Analyst | 2h | 660 |
| 9 | 1.2.3 | Definition of the main characteristics of a project product |  | 8h | 2018-09-18 | 2018-09-18 | 4 | 29.75d | 1.25d |  | Analyst | 8h | 2,640 |
| 10 | 1.2.4 | Determining the conditions for the implementation of the project |  | 8h | 2018-09-17 | 2018-09-18 | 4 | 29.75d | 1.25d |  | Project curator; Manager `s assistant | 8h | 800 |
| 11 | 1.2.5 | Determining the delivery of the results of intermediate stages |  | 2h | 2018-09-17 | 2018-09-18 | 4 | 30.5d | 2d |  | Project curator; CEO [25%] | 0.5h |  |
| 12 | 1.2.6 | Determining the conditions for interaction between participants |  | 4h | 2018-09-18 | 2018-09-18 | 4 | 30.25d | 1.75d |  | Manager | 4h | 1,400 |
| 13 | 1.3 | **Development of the Project Charter** |  | 2.75d | 2018-09-17 | 2018-09-20 |  | 29.75d |  |  |  | 5h | 1,300 |
| 14 | 1.3.1 | Development of the Project Charter |  | 1d | 2018-09-17 | 2018-09-18 | 4 | 29.75d | 1.25d |  | Project curator; Paper; Technical writer [50%] | 4h | 1,300 |
| 15 | 1.3.2 | Harmonization of the Project Charter |  | 4h | 2018-09-20 | 2018-09-20 | 7, 8, 9, 10, 11, 12, 14 | 28.5d | 0d |  | Project curator; CEO [25%] | 1h |  |
| 16 | 1.3.3 | Milestone: Project Charter | milestone | 0d | 2018-09-20 | 2018-09-20 | 15 | 72d |  |  |  |  |  |
| 17 | 1.4 | Holding the kick-off meeting for the project | manual | 1d | 2018-10-09 | 2018-10-09 | 15 |  |  |  | Manager; Project curator; System Architect [50%] | 12h | 3,880 |
| 18 | 2 | **Planning** |  | 11.88d | 2018-10-10 | 2018-10-25 |  | 16.25d |  | start no earlier than 2018-10-09 |  | 188h | 66,254 |
| 19 | 2.1 | Creating a hierarchical structure of project activities |  | 1d | 2018-10-10 | 2018-10-10 | 17 | 16.25d | 0d |  | Manager | 8h | 2,800 |
| 20 | 2.2 | **Project Quality Planning** |  | 6.88d | 2018-10-10 | 2018-10-19 |  | 50.88d |  |  |  | 16h | 6,400 |
| 21 | 2.2.1 | Determination the quality of planning |  | 3h | 2018-10-10 | 2018-10-11 | 19 | 56.5d | 5.62d |  | Analyst | 8h | 4,000 |
| 22 | 2.2.2 | Distribution of responsibility for quality between project participants |  | 5h | 2018-10-19 | 2018-10-19 | 21 | 50.88d | 0d | start no earlier than 2018-10-19 | Manager | 5h | 1,750 |
| 23 | 2.2.3 | Harmonization of the list of standards, procedures and methods for quality assurance and control |  | 2h | 2018-10-19 | 2018-10-19 | 22 | 50.88d | 0d |  | Manager [10%]; Project curator [50%]; Manager `s assistant [90%] | 3h | 650 |
| 24 | 2.2.4 | Milestone: List of standards, procedures and methods for quality assurance and controlz | milestone | 0d | 2018-10-19 | 2018-10-19 | 23 | 50.88d |  |  |  |  |  |

| ID | WBS | Task | Type | Duration | Start | Finish | Predecessors | Total slack | Free slack | Resources | Work | Cost |
| --- | --- | --- | --- | --- | --- | --- | --- | --- | --- | --- | --- | --- |
| 25 | 2.3 | **Determination the relationship and duration of work** |  | 2.38d | 2018-10-11 | 2018-10-15 |  | 16.38d |  |  | 52h | 21,050 |
| 26 | 2.3.1 | Schedule Scheduling |  | 4h | 2018-10-11 | 2018-10-11 | 19 | 16.38d | 0d | Analyst [25%]; Manager | 5h | 1,730 |
| 27 | 2.3.2 | Determination of operations |  | 4h | 2018-10-11 | 2018-10-11 | 26 | 16.38d | 0d | Technical writer [20%]; Analyst | 8.8h | 4,200 |
| 28 | 2.3.3 | Sequence definition |  | 8h | 2018-10-11 | 2018-10-12 | 27 | 55.38d | 0d | Analyst; System Architect; Manager | 16h | 6,160 |
| 29 | 2.3.4 | Evaluation of operation resources |  | 8h | 2018-10-11 | 2018-10-12 | 27 | 55.38d | 0d | Analyst; Manager `s assistant [20%] | 9.6h | 4,160 |
| 30 | 2.3.5 | Evaluation of the duration of operations |  | 8h | 2018-10-11 | 2018-10-12 | 27 | 16.38d | 0d | Technical writer [20%]; Analyst | 9.6h | 4,500 |
| 31 | 2.3.6 | Scheduling |  | 3h | 2018-10-15 | 2018-10-15 | 28, 29, 30 | 55.38d | 0d | Manager `s assistant | 3h | 300 |
| 32 | 2.3.7 | Milestone: Network project model | milestone | 0d | 2018-10-15 | 2018-10-15 | 31 | 55.38d |  |  |  |  |
| 33 | 2.4 | **Project cost management** |  | 1d | 2018-10-11 | 2018-10-11 |  | 56.75d |  |  | 10h | 2,580 |
| 34 | 2.4.1 | Cost Management Planning |  | 4h | 2018-10-11 | 2018-10-11 | 19 | 56.75d | 0d | Financier; Analyst [25%] | 5h | 1,290 |
| 35 | 2.4.2 | The reconciliation of the projected cost of each work of the calendar plan |  | 4h | 2018-10-11 | 2018-10-11 | 34 | 56.75d | 0d | Financier; Analyst [25%] | 5h | 1,290 |
| 36 | 2.4.3 | Milestone: The projected cost of each work of the calendar plan | milestone | 0d | 2018-10-11 | 2018-10-11 | 35 | 56.75d |  |  |  |  |
| 37 | 2.5 | **Assessment of resource requirements** |  | 1.88d | 2018-10-12 | 2018-10-16 |  | 16.38d |  |  | 13.6h | 4,760 |
| 38 | 2.5.1 | Defining a resource list |  | 5h | 2018-10-12 | 2018-10-15 | 30 | 16.38d | 0d | Manager; Analyst | 5h | 1,650 |
| 39 | 2.5.2 | Reconciling the resource list |  | 2h | 2018-10-15 | 2018-10-15 | 38 | 16.38d | 0d | Project curator; Manager `s assistant | 2h | 200 |
| 40 | 2.5.3 | Milestone: List of resources | milestone | 0d | 2018-10-15 | 2018-10-15 | 39 | 54.88d |  |  |  |  |
| 41 | 2.5.4 | Create a composite resource plan |  | 4h | 2018-10-15 | 2018-10-16 | 39 | 16.38d | 0d | Manager [30%] | 2.6h | 1,210 |
| 42 | 2.5.5 | Harmonization of the composite resource plan |  | 4h | 2018-10-16 | 2018-10-16 | 41 | 16.38d | 0d | Manager; Project curator | 4h | 1,700 |
| 43 | 2.5.6 | Milestone: Consolidated resource plan | milestone | 0d | 2018-10-16 | 2018-10-16 | 42 | 16.38d | 0d |  |  |  |
| 44 | 2.6 | **Development of a calendar plan** |  | 1d | 2018-10-16 | 2018-10-17 |  | 16.38d |  |  | 6h | 2,400 |
| 45 | 2.6.1 | Creation of the calendar plan |  | 4h | 2018-10-16 | 2018-10-17 | 43 | 16.38d | 0d | Manager [50%] | 2h | 1,000 |
| 46 | 2.6.2 | Harmonization of the calendar plan |  | 4h | 2018-10-17 | 2018-10-17 | 45 | 16.38d | 0d | Manager; Project curator | 4h | 1,400 |
| 47 | 2.6.3 | Milestone: Porject calendar plan | milestone | 0d | 2018-10-17 | 2018-10-17 | 46 | 52.88d |  |  |  |  |
| 48 | 2.7 | **Project Risk Management** |  | 3.25d | 2018-10-11 | 2018-10-16 |  | 16.25d |  |  | 16h | 4,700 |
| 49 | 2.7.1 | Risk Management Planning |  | 4h | 2018-10-11 | 2018-10-11 | 19 | 16.25d | 0d | Analyst [25%] | 1h | 330 |
| 50 | 2.7.2 | Identification of risks |  | 4h | 2018-10-11 | 2018-10-11 | 49 | 16.25d | 0d | Manager `s assistant | 4h | 400 |
| 51 | 2.7.3 | Qualitative risk analysis |  | 4h | 2018-10-12 | 2018-10-12 | 50 | 16.25d | 0.25d | Analyst | 4h | 1,320 |
| 52 | 2.7.4 | Quantitative Risk Analysis |  | 4h | 2018-10-12 | 2018-10-12 | 50 | 16.25d | 0.25d | Analyst | 4h | 1,660 |
| 53 | 2.7.5 | Risk Response Planning |  | 10h | 2018-10-15 | 2018-10-16 | 51, 52 | 18d | 0d | Analyst [30%] | 3h | 990 |
| 54 | 2.7.6 | Milestone: List of identified risks or conditions of their occurrence | milestone | 0d | 2018-10-16 | 2018-10-16 | 53 | 54.5d |  |  |  |  |

| ID | WBS | Task | Type | Duration | Start | Finish | Predecessors | Total slack | Free slack | Constraint | Resources | Work | Cost |
| --- | --- | --- | --- | --- | --- | --- | --- | --- | --- | --- | --- | --- | --- |
| 55 | 2.8 | **Development of the project budget** |  | 3d | 2018-10-17 | 2018-10-22 |  | 16.38d |  |  |  | 32h | 8,700 |
| 56 | 2.8.1 | Project Budget Calculation |  | 1d | 2018-10-17 | 2018-10-18 | 46, 53 | 16.38d | 0d |  | Financier; Analyst; Paper | 16h | 4,860 |
| 57 | 2.8.2 | Budget reconciliation |  | 1d | 2018-10-18 | 2018-10-19 | 56 | 16.38d | 0d |  | Financier; Project curator | 8h | 1,920 |
| 58 | 2.8.3 | Changes in the size of the project budget |  | 4h | 2018-10-19 | 2018-10-22 | 57 | 16.38d | 0d |  | Financier | 4h | 960 |
| 59 | 2.8.4 | Approval of the budget |  | 4h | 2018-10-22 | 2018-10-22 | 58 | 16.38d | 0d |  | Financier; Project curator | 4h | 960 |
| 60 | 2.8.5 | Milestone: Project budget | milestone | 0d | 2018-10-22 | 2018-10-22 | 59 | 49.88d |  |  |  |  |  |
| 61 | 2.9 | **Development of the project plan** |  | 3d | 2018-10-22 | 2018-10-25 |  | 16.38d |  |  |  | 34.4h | 12,864 |
| 62 | 2.9.1 | Creating a Project Plan |  | 1d | 2018-10-22 | 2018-10-23 | 59 | 16.38d | 0d |  | Manager; Paper | 8h | 3,100 |
| 63 | 2.9.2 | Alignment of the plan by the main participants |  | 1d | 2018-10-23 | 2018-10-24 | 62 | 16.38d | 0d |  | System Architect [40%]; Analyst; Project curator; Coolers with water; Financier; Electricity [0.1%]; Paper; Designer [50%] | 23.2h | 8,344 |
| 64 | 2.9.3 | Approval of the plan with the customer |  | 1d | 2018-10-24 | 2018-10-25 | 63 | 16.38d | 0d |  | Manager [40%]; Project curator; Paper | 3.2h | 1,420 |
| 65 | 2.9.4 | Milestone: Project plan | milestone | 0d | 2018-10-25 | 2018-10-25 | 64 | 46.88d |  |  |  |  |  |
| 66 | 3 | **Execution** |  | 33.25d | 2018-11-13 | 2018-12-28 |  | 0.25d |  | start no earlier than 2018-11-13 |  | 578.3h | 140,290 |
| 67 | 3.1 | **Recruitment of project team** |  | 4d | 2018-11-13 | 2018-11-16 |  | 0.25d |  |  |  | 136h | 34,600 |
| 68 | 3.1.1 | Selection of participants for work in the project |  | 2d | 2018-11-13 | 2018-11-14 | 56 | 0.25d | 0d |  | Manager `s assistant | 16h | 1,600 |
| 69 | 3.1.2 | Mobilization of the team, holding a fact-finding meeting |  | 2d | 2018-11-14 | 2018-11-16 | 68 | 0.25d | 0d |  | Analyst; Paper; Designer [50%]; Coolers with water; Project curator; Manager; Programmer; System Architect; Tester; Technical writer; Financier; Electricity [0.1%] | 120h | 33,000 |
| 70 | 3.2 | **Development of Conceptual Design / Terms of Reference** |  | 3d | 2018-11-19 | 2018-11-21 |  | 0.25d |  |  |  | 32h | 9,500 |
| 71 | 3.2.1 | Development of Conceptual Design / Terms of Reference |  | 1d | 2018-11-19 | 2018-11-19 | 64, 69 | 0.25d | 0d |  | Technical writer; Paper | 8h | 2,300 |
| 72 | 3.2.2 | Harmonization of the Conceptual Design / Terms of Reference |  | 4h | 2018-11-19 | 2018-11-20 | 71 | 0.25d | 0d |  | Technical writer; Manager; Project curator | 8h | 2,400 |
| 73 | 3.2.3 | Correction of the remarks |  | 1d | 2018-11-20 | 2018-11-21 | 72 | 0.25d | 0d |  | Technical writer | 8h | 2,000 |
| 74 | 3.2.4 | Signing the Conceptual Design / Terms of Reference |  | 4h | 2018-11-21 | 2018-11-21 | 73 | 27.75d | 0d |  | Manager; Project curator | 8h | 2,800 |
| 75 | 3.2.5 | Milestone: Conceptual Design / Terms of Reference | milestone | 0d | 2018-11-21 | 2018-11-21 | 74 | 27.75d |  |  |  |  |  |
| 76 | 3.3 | **Development of the project architecture** |  | 2.5d | 2018-11-21 | 2018-11-23 |  | 0.25d |  |  |  | 34h | 8,860 |
| 77 | 3.3.1 | Preparation of materials |  | 1d | 2018-11-21 | 2018-11-22 | 73 | 0.25d | 0d |  | System Architect; Programmer; Paper | 16h | 3,660 |
| 78 | 3.3.2 | Milestone: Presentation of materials for the architectural solution | milestone | 0d | 2018-11-22 | 2018-11-22 | 77 | 0.25d | 0d |  |  |  |  |
| 79 | 3.3.3 | Meeting on architecture |  | 4h | 2018-11-22 | 2018-11-22 | 78 | 0.25d | 0d |  | System Architect; Manager; Designer [50%] | 10h | 3,040 |
| 80 | 3.3.4 | Milestone: Protocol of the meeting on architecture | milestone | 0h | 2018-11-22 | 2018-11-22 | 79 | 26.75d |  |  |  |  |  |
| 81 | 3.3.5 | Preparation of the project architecture |  | 1d | 2018-11-23 | 2018-11-23 | 79 | 0.25d | 0d |  | System Architect | 8h | 2,160 |
| 82 | 3.3.6 | Milestone: Architectural solution | milestone | 0d | 2018-11-23 | 2018-11-23 | 81 | 25.75d |  |  |  |  |  |

| ID | WBS | Task | Type | Duration | Start | Finish | Predecessors | Total slack | Free slack | Constraint | Resources | Work | Cost |
| --- | --- | --- | --- | --- | --- | --- | --- | --- | --- | --- | --- | --- | --- |
| 83 | 3.4 | **Creation of the Project Product** |  | 15d | 2018-11-26 | 2018-12-14 |  | 0.25d |  |  |  | 176h | 35,840 |
| 84 | 3.4.1 | Development of an algorithm for managing flowers orders |  | 3d | 2018-11-26 | 2018-11-28 | 81 | 0.25d | 0d |  | Programmer | 24h | 3,600 |
| 85 | 3.4.2 | Development of the main applications screens |  | 3d | 2018-11-29 | 2018-12-03 | 84 | 0.25d | 0d |  | Designer [50%]; Programmer | 36h | 6,960 |
| 86 | 3.4.3 | Create an order history screen |  | 3d | 2018-12-04 | 2018-12-06 | 85 | 0.25d | 0d |  | Designer [50%]; Programmer | 36h | 6,960 |
| 87 | 3.4.4 | Create application settings screen |  | 2d | 2018-12-07 | 2018-12-10 | 86 | 0.25d | 0d |  | Designer [50%]; Programmer | 24h | 4,640 |
| 88 | 3.4.5 | Создание экрана информации о приложении и обратной связи |  | 1d | 2018-12-11 | 2018-12-11 | 87 | 0.25d | 0d |  | Designer [50%]; Programmer | 12h | 2,320 |
| 89 | 3.4.6 | Drawing UI, UX |  | 3d | 2018-12-12 | 2018-12-14 | 88 | 0.25d | 0d |  | Designer [50%] | 12h | 3,360 |
| 90 | 3.4.7 | **Development and coordination of documentation for the created product** |  | 4d | 2018-11-28 | 2018-12-04 |  | 16.25d |  |  |  | 32h | 8,000 |
| 91 | 3.4.7.1 | Development of an Explanatory Memorandum |  | 1d | 2018-11-28 | 2018-11-29 | 84 | 16.25d | 0d |  | Technical writer; Paper | 8h | 2,000 |
| 92 | 3.4.7.2 | Harmonization of the Explanatory Memorandum |  | 1d | 2018-12-04 | 2018-12-04 | 91 | 18.75d |  |  | Technical writer; Project curator | 8h | 2,000 |
| 93 | 3.4.7.3 | Milestone: Explanatory note | milestone | 0d | 2018-11-28 | 2018-11-28 | 84 | 22.75d |  |  |  |  |  |
| 94 | 3.4.7.4 | Development of operator's manual |  | 1d | 2018-11-29 | 2018-11-30 | 91 | 16.25d | 0d |  | Technical writer; Paper | 8h | 2,000 |
| 95 | 3.4.7.5 | Coordination of operator's manual |  | 1d | 2018-11-30 | 2018-12-03 | 94 | 19.75d | 0d |  | Technical writer; Project curator | 8h | 2,000 |
| 96 | 3.4.7.6 | Milestone: Operator's manual | milestone | 0d | 2018-12-03 | 2018-12-03 | 95 | 19.75d |  |  |  |  |  |
| 97 | 3.4.7.7 | Milestone: Complete sets of operational and technical documentation | milestone | 0d | 2018-11-30 | 2018-11-30 | 94 | 16.25d | 16d |  |  |  |  |
| 98 | 3.5 | **Testing a project product** |  | 8d | 2018-12-17 | 2018-12-26 |  | 0.25d |  |  |  | 144h | 39,180 |
| 99 | 3.5.1 | Development of strategy and test plan |  | 1d | 2018-12-17 | 2018-12-17 | 89 | 0.25d | 0d |  | Tester; Technical writer | 16h | 3,760 |
| 100 | 3.5.2 | Testing a project product |  | 3d | 2018-12-18 | 2018-12-20 | 99 | 0.25d | 0d |  | Tester | 24h | 5,280 |
| 101 | 3.5.3 | Harmonization of test protocols |  | 1d | 2018-12-20 | 2018-12-21 | 100 | 0.25d | 0d |  | Manager; Tester; Coolers with water; Project curator | 16h | 6,060 |
| 102 | 3.5.4 | Milestone: Testing protocols | milestone | 0d | 2018-12-21 | 2018-12-21 | 101 | 0.25d | 0d |  |  |  |  |
| 103 | 3.5.5 | Fixing problems |  | 3d | 2018-12-21 | 2018-12-26 | 101 | 2.75d |  | start no earlier than 2018-10-05 | Tester; Programmer; System Architect | 72h | 19,680 |
| 104 | 3.5.6 | Harmonization of remedial protocols |  | 1d | 2018-12-21 | 2018-12-24 | 102 | 0.25d | 0d |  | Tester; Analyst; Project curator | 16h | 4,400 |
| 105 | 3.5.7 | Milestone: Protocol for the elimination of comments | milestone | 0d | 2018-12-24 | 2018-12-24 | 104 | 4.75d |  |  |  |  |  |
| 106 | 3.6 | **Uploading the app on Google Play** |  | 3d | 2018-12-25 | 2018-12-27 |  | 0.25d |  |  |  | 52h | 11,120 |
| 107 | 3.6.1 | Sending an app to Google Play for review |  | 1d | 2018-12-25 | 2018-12-25 | 104, 97 | 0.25d | 0d |  | Programmer | 8h | 1,200 |
| 108 | 3.6.2 | Milestone: List of comments | milestone | 0d | 2018-12-25 | 2018-12-25 | 107 | 0.25d | 0d |  |  |  |  |
| 109 | 3.6.3 | Modifying the application |  | 1d | 2018-12-26 | 2018-12-26 | 108 | 0.25d | 0d |  | Technical writer; Programmer; Designer [50%]; Analyst; Tester | 36h | 8,720 |
| 110 | 3.6.4 | Resend the app on Google Play |  | 1d | 2018-12-27 | 2018-12-27 | 109 | 0.25d | 0d |  | Programmer | 8h | 1,200 |
| 111 | 3.6.5 | Milestone: Google Play Product Procurement Confirmation Report | milestone | 0d | 2018-12-27 | 2018-12-27 | 110 | 1.75d |  |  |  |  |  |

| ID | WBS | Task | Type | Duration | Start | Finish | Predecessors | Total slack | Free slack | Constraint | Deadline | Resources | Work | Cost |
| --- | --- | --- | --- | --- | --- | --- | --- | --- | --- | --- | --- | --- | --- | --- |
| 112 | 3.7 | **Acceptance of the product** |  | 0.25d | 2018-12-27 | 2018-12-28 |  | 0.25d |  |  |  |  | 4.3h | 1,190 |
| 113 | 3.7.1 | Conducting a meeting on the acceptance of the product |  | 1h | 2018-12-27 | 2018-12-28 | 110 | 0.25d | 0d |  |  | Analyst; CEO [25%]; Project curator | 1.25h | 330 |
| 114 | 3.7.2 | Create a product acceptance protocol |  | 1h | 2018-12-28 | 2018-12-28 | 113 | 0.25d | 0d |  |  | Technical writer; Manager [80%]; Paper | 1.8h | 530 |
| 115 | 3.7.3 | Signing of the Product Acceptance Protocol |  | 1h | 2018-12-28 | 2018-12-28 | 113 | 1.5d |  |  |  | CEO [25%]; Project curator; Analyst | 1.25h | 330 |
| 116 | 3.7.4 | Milestone: Product Acceptance Protocol | milestone | 0d | 2018-12-28 | 2018-12-28 | 114 | 1.5d |  |  |  |  |  |  |
| 117 | 4 | **Monitoring and Management** |  | 54d | 2018-10-01 | 2018-12-13 |  | 12d |  |  | 2018-12-31 |  | 19.2h | 6,720 |
| 118 | 4.1 | **General Change Management** |  | 54d | 2018-10-01 | 2018-12-13 |  | 12d |  |  |  |  |  |  |
| 119 | 4.1.1 | **Content management** |  | 51d | 2018-10-04 | 2018-12-13 |  | 12d |  |  |  |  |  |  |
| 120 | 4.1.1.1 | **Определение изменений в содержании и внесение корректив** |  | 51d | 2018-10-04 | 2018-12-13 |  | 12d |  |  |  |  |  |  |
| 121 | 4.1.1.1.1 | Determining changes in content and making adjustments 1 |  | 1d | 2018-10-04 | 2018-10-04 |  | 62d |  | start no earlier than 2018-10-04 |  |  |  |  |
| 122 | 4.1.1.1.2 | Determining changes in content and making adjustments 2 |  | 1d | 2018-10-18 | 2018-10-18 |  | 52d |  | start no earlier than 2018-10-18 |  |  |  |  |
| 123 | 4.1.1.1.3 | Determining changes in content and making adjustments 3 |  | 1d | 2018-11-01 | 2018-11-01 |  | 42d |  | start no earlier than 2018-11-01 |  |  |  |  |
| 124 | 4.1.1.1.4 | Determining changes in content and making adjustments 4 |  | 1d | 2018-11-15 | 2018-11-15 |  | 32d |  | start no earlier than 2018-11-15 |  |  |  |  |
| 125 | 4.1.1.1.5 | Determining changes in content and making adjustments 5 |  | 1d | 2018-11-29 | 2018-11-29 |  | 22d |  | start no earlier than 2018-11-29 |  |  |  |  |
| 126 | 4.1.1.1.6 | Determining changes in content and making adjustments 6 |  | 1d | 2018-12-13 | 2018-12-13 |  | 12d |  | start no earlier than 2018-12-13 |  |  |  |  |
| 127 | 4.1.2 | **Managing of the schedule** |  | 0.5d | 2018-10-01 | 2018-10-01 |  | 65.5d |  |  |  |  |  |  |
| 128 | 4.1.2.1 | Determination of the changes in the schedule |  | 4h | 2018-10-01 | 2018-10-01 |  | 65.5d |  |  |  |  |  |  |
| 129 | 4.1.2.2 | Making adjustments |  | 4h | 2018-10-01 | 2018-10-01 |  | 65.5d |  |  |  |  |  |  |
| 130 | 4.2 | **Reporting on execution** |  | 31d | 2018-11-01 | 2018-12-13 |  | 12d |  |  |  |  | 19.2h | 6,720 |
| 131 | 4.2.1 | **Meeting with Project Curator** |  | 31d | 2018-11-01 | 2018-12-13 |  | 12d |  |  |  |  | 19.2h | 6,720 |
| 132 | 4.2.1.1 | Meeting with Project Curator 1 |  | 1d | 2018-11-01 | 2018-11-01 |  | 42d |  | start no earlier than 2018-11-01 |  | Project curator | 8h | 3,200 |
| 133 | 4.2.1.2 | Meeting with Project Curator 2 |  | 1d | 2018-11-15 | 2018-11-15 |  | 32d |  | start no earlier than 2018-11-15 |  | Manager `s assistant [20%]; Project curator | 1.6h | 160 |
| 134 | 4.2.1.3 | Meeting with Project Curator 3 |  | 1d | 2018-11-29 | 2018-11-29 |  | 22d |  | start no earlier than 2018-11-29 |  | Project curator; Manager [20%] | 1.6h | 560 |
| 135 | 4.2.1.4 | Meeting with Project Curator 4 |  | 1d | 2018-12-13 | 2018-12-13 |  | 12d |  | start no earlier than 2018-12-13 |  | Project curator; Manager | 8h | 2,800 |

| ID | WBS | Task | Type | Duration | Start | Finish | Predecessors | Total slack | Free slack | Deadline | Resources | Work | Cost |
| --- | --- | --- | --- | --- | --- | --- | --- | --- | --- | --- | --- | --- | --- |
| 136 | 5 | **Closing** |  | 1.5d | 2018-12-28 | 2018-12-31 |  | 0.25d |  | 2019-01-02 |  | 37h | 23,460 |
| 137 | 5.1 | Preparation and approval of the final report on the results of the IT project |  | 4h | 2018-12-28 | 2018-12-28 | 114 | 0.25d | 0d |  | Project curator; Analyst; Manager; Financier; Technical writer; Paper; Coolers with water | 16h | 6,480 |
| 138 | 5.2 | Transfer of project documents (originals) to the archive |  | 4h | 2018-12-31 | 2018-12-31 | 137 | 1.88d | 0d |  | Analyst | 4h | 1,320 |
| 139 | 5.3 | Transfer of project documents (electronic documents) to the knowledge base of the Project Office |  | 4h | 2018-12-28 | 2018-12-31 | 137 | 2.38d | 0.5d |  | Manager | 4h | 1,400 |
| 140 | 5.4 | Development and coordination of the project budget execution |  | 4h | 2018-12-28 | 2018-12-31 | 137 | 1.88d | 0d |  | Analyst; Paper; CEO [25%]; Electricity [0.1%]; Financier | 9h | 13,300 |
| 141 | 5.5 | Milestone: The order to close the project | milestone | 0d | 2018-12-31 | 2018-12-31 | 140, 139, 138 | 1.88d |  |  |  |  |  |
| 142 | 5.6 | Development and approval of an official memo for the payment of bonuses |  | 4h | 2018-12-31 | 2018-12-31 | 140 | 1.88d |  |  | Financier | 4h | 960 |
